# Proyecto inicialmente

Schedule from MS Project, 2024-11-11 to 2024-11-29, costs in €, A marks actual dates.

## Calendars

- Estándar: Mon-Fri 09:00-13:00, 15:00-19:00; Sat-Sun off.

## Resources

| Resource | Rate |
| --- | --- |
| Gestor de proyectos 1 | 53.39 |
| Arquitecto de sistemas 1 | 40.48 |
| Administrador de datos 1 | 40.11 |
| Desarrollador 1 | 31.06 |
| Desarrollador 2 | 31.06 |
| Desarrollador 3 | 31.06 |
| Desarrollador 4 | 31.06 |
| Desarrollador 5 | 31.06 |
| Arquitecto de sistemas 2 | 40.48 |
| Arquitecto de sistemas 3 | 40.48 |
| Arquitecto de sistemas 4 | 40.48 |
| Arquitecto de sistemas 5 | 40.48 |
| Gestor de proyectos 2 | 53.39 |
| Gestor de proyectos 3 | 53.39 |
| Gestor de proyectos 4 | 53.39 |
| Gestor de proyectos 5 | 53.39 |
| Administrador de datos 2 | 40.11 |
| Administrador de datos 3 | 40.11 |
| Administrador de datos 4 | 40.11 |
| Administrador de datos 5 | 40.11 |
| Tester de Calidad 1 | 26.07 |
| Tester de Calidad 3 | 26.07 |
| Tester de Calidad 2 | 26.07 |
| Tester de Calidad 4 | 26.07 |
| Tester de Calidad 5 | 26.07 |

## Schedule

| ID | WBS | Task | Type | Duration | Start | Finish | Predecessors | Complete | Remaining | Baseline start | Baseline finish | Baseline duration | Total slack | Resources | Work | Actual work | Cost | Baseline cost | Actual cost |
| --- | --- | --- | --- | --- | --- | --- | --- | --- | --- | --- | --- | --- | --- | --- | --- | --- | --- | --- | --- |
| 1 | 1 | **Proyecto** |  | 15d | 2024-11-11 09:00 A | 2024-11-29 19:00 |  | 28% | 10.72d | 2024-11-08 09:00 | 2024-11-28 19:00 | 15d |  | Gestor de proyectos 1 [20%]; Gestor de proyectos 2 [20%]; Gestor de proyectos 3 [20%]; Gestor de proyectos 4 [20%]; Gestor de proyectos 5 [20%] | 219.28h | 28.28h | 9,630.49 | 11,455.61 | 954.31 |
| 2 | 1.1 | **Ejecución** |  | 13d | 2024-11-11 09:00 A | 2024-11-27 19:00 |  | 29% | 9.17d | 2024-11-08 09:00 | 2024-11-27 19:00 | 14d | 0d |  | 89.28h | 26.28h | 2,734.45 | 4,346.01 | 847.53 |
| 3 | 1.1.1 | **Formación en Django** |  | 0.62d | 2024-11-11 09:00 A | 2024-11-11 16:00 A |  | 100% |  | 2024-11-08 09:00 | 2024-11-11 19:00 | 2d |  |  | 10h | 10h | 310.6 | 496.96 | 310.6 |
| 4 | 1.1.1 | Formación para backend | manual | 5h | 2024-11-11 09:00 A | 2024-11-11 16:00 A |  | 100% |  | 2024-11-08 09:00 | 2024-11-08 19:00 | 8h |  | Desarrollador 1 [20%]; Desarrollador 2 [20%]; Desarrollador 3 [20%]; Desarrollador 4 [20%]; Desarrollador 5 [20%] | 5h | 5h | 155.3 | 248.48 | 155.3 |
| 5 | 1.1.2 | Formación para frontend | manual | 5h | 2024-11-11 09:00 A | 2024-11-11 16:00 A | 4 | 100% |  | 2024-11-11 09:00 | 2024-11-11 19:00 | 8h |  | Desarrollador 1 [20%]; Desarrollador 2 [20%]; Desarrollador 3 [20%]; Desarrollador 4 [20%]; Desarrollador 5 [20%] | 5h | 5h | 155.3 | 248.48 | 155.3 |
| 6 | 1.1.1.3 | Capacitación | milestone, manual | 0h | 2024-11-11 09:00 A | 2024-11-11 09:00 A |  | 100% |  | 2024-11-08 09:00 | 2024-11-08 09:00 | 0h |  |  |  |  |  |  |  |
| 7 | 1.1.2 | **Frontend** |  | 10d | 2024-11-12 09:00 A | 2024-11-26 09:00 |  | 23% | 7.7d | 2024-11-12 09:00 | 2024-11-26 09:00 | 10d | 0d |  | 32.45h | 7.45h | 987.83 | 1,531.49 | 231.29 |
| 8 | 1.2.1 | **Página de inicio** |  | 0.25d | 2024-11-12 09:00 A | 2024-11-12 11:00 A |  | 100% |  | 2024-11-12 09:00 | 2024-11-12 16:00 | 0.62d |  |  | 1.98h | 1.98h | 61.5 | 153.75 | 61.5 |
| 9 | 1.2.1.1 | Diseño gráfico de la página de inicio. | manual | 2h | 2024-11-12 09:00 A | 2024-11-12 11:00 A | 5 | 100% |  | 2024-11-12 09:00 | 2024-11-12 16:00 | 5h |  | Desarrollador 1 [33%]; Desarrollador 2 [33%]; Desarrollador 3 [33%] | 1.98h | 1.98h | 61.5 | 153.75 | 61.5 |
| 10 | 1.2.2 | **Catálogo de cursos con filtros** |  | 1.51d | 2024-11-18 10:00 A | 2024-11-19 16:03 A |  | 100% |  | 2024-11-18 10:00 | 2024-11-19 17:00 | 1.62d |  |  | 2.8h | 2.8h | 86.97 | 341.66 | 86.97 |
| 11 | 1.2.2.1 | Diseño de la estructura visual del catálogo de cursos | manual | 0.5h | 2024-11-18 10:00 A | 2024-11-18 10:30 A | 44 | 100% |  | 2024-11-18 10:00 | 2024-11-18 16:00 | 4h |  | Desarrollador 1 [50%]; Desarrollador 2 [50%] | 0.5h | 0.5h | 15.53 | 124.24 | 15.53 |
| 12 | 1.2.2.2 | Integración de la paginación y opciones de ordenamiento de cursos. | manual | 1.25h | 2024-11-18 16:00 A | 2024-11-18 17:15 A | 11 | 100% |  | 2024-11-18 16:00 | 2024-11-19 11:00 | 5h |  | Desarrollador 1 [50%]; Desarrollador 2 [50%] | 1.25h | 1.25h | 38.83 | 155.3 | 38.83 |
| 13 | 1.2.2.3 | Desarrollo de la vista de resultados de búsqueda. | manual | 1.05h | 2024-11-19 15:00 A | 2024-11-19 16:03 A | 56 | 100% |  | 2024-11-19 15:00 | 2024-11-19 17:00 | 2h |  | Desarrollador 3 [50%]; Desarrollador 4 [50%] | 1.05h | 1.05h | 32.61 | 62.12 | 32.61 |
| 14 | 1.2.3 | **Ficha de curso para los clientes** |  | 1.25d | 2024-11-19 17:00 A | 2024-11-20 19:00 |  | 20% | 1d | 2024-11-19 17:00 | 2024-11-20 19:00 | 1.25d | 0d |  | 5h | 1h | 155.3 | 217.42 | 31.06 |
| 15 | 1.2.3.1 | Diseño del layout de la ficha de curso. | manual | 1h | 2024-11-19 17:00 A | 2024-11-19 18:00 A | 13 | 100% |  | 2024-11-19 17:00 | 2024-11-20 10:00 | 3h |  | Desarrollador 1 [33%]; Desarrollador 2 [33%]; Desarrollador 3 [34%] | 1h | 1h | 31.06 | 93.18 | 31.06 |
| 16 | 1.2.3.2 | Implementación de la visualización de detalles del curso (descripción, precio, duración, etc.). | manual | 2h | 2024-11-20 10:00 | 2024-11-20 12:00 | 15 |  |  | 2024-11-20 10:00 | 2024-11-20 12:00 | 2h |  | Desarrollador 1 [50%]; Desarrollador 5 [50%] | 2h |  | 62.12 | 62.12 |  |
| 17 | 1.2.3.4 | Integración de una imagen del curso. | manual | 1h | 2024-11-20 10:00 | 2024-11-20 11:00 | 16SS |  |  | 2024-11-20 10:00 | 2024-11-20 11:00 | 1h |  | Desarrollador 4 | 1h |  | 31.06 | 31.06 |  |
| 18 | 1.2.3.5 | Implementación de botones de acción (añadir al carrito, compartir, etc.). | manual | 1h | 2024-11-20 18:00 | 2024-11-20 19:00 | 20 |  |  | 2024-11-20 18:00 | 2024-11-20 19:00 | 1h |  | Desarrollador 1 | 1h |  | 31.06 | 31.06 |  |
| 19 | 1.2.4 | **Carrito de compras** |  | 3.62d | 2024-11-20 12:00 | 2024-11-26 09:00 |  |  |  | 2024-11-20 12:00 | 2024-11-26 09:00 | 3.62d | 0d |  | 6h |  | 186.36 | 186.36 |  |
| 20 | 1.2.4.1 | Diseño del layout del carrito de compra. | manual | 4h | 2024-11-20 12:00 | 2024-11-20 18:00 | 17, 16 |  |  | 2024-11-20 12:00 | 2024-11-20 18:00 | 4h |  | Desarrollador 2 [33%]; Desarrollador 3 [33%]; Desarrollador 4 [34%] | 4h |  | 124.24 | 124.24 |  |
| 21 | 1.2.4.2 | Implementación de la funcionalidad para añadir y eliminar cursos. | manual | 1h | 2024-11-20 18:00 | 2024-11-20 19:00 | 20 |  |  | 2024-11-20 18:00 | 2024-11-20 19:00 | 1h |  | Desarrollador 5 | 1h |  | 31.06 | 31.06 |  |
| 22 | 1.2.4.3 | Integración del cálculo automático del total | manual | 1h | 2024-11-20 18:00 | 2024-11-20 19:00 | 20 |  |  | 2024-11-20 18:00 | 2024-11-20 19:00 | 1h |  | Desarrollador 1 | 1h |  | 31.06 | 31.06 |  |
| 23 | 1.1.2.4.4 | Desarrollo del sistema | milestone, manual | 0h | 2024-11-26 09:00 | 2024-11-26 09:00 |  |  |  | 2024-11-26 09:00 | 2024-11-26 09:00 | 0h |  |  |  |  |  |  |  |
| 24 | 1.1.2.4.5 | Diseño del sistema | milestone, manual | 0h | 2024-11-26 09:00 | 2024-11-26 09:00 |  |  |  | 2024-11-26 09:00 | 2024-11-26 09:00 | 0h |  |  |  |  |  |  |  |

| ID | WBS | Task | Type | Duration | Start | Finish | Predecessors | Complete | Remaining | Baseline start | Baseline finish | Baseline duration | Total slack | Resources | Work | Actual work | Cost | Baseline cost | Actual cost |
| --- | --- | --- | --- | --- | --- | --- | --- | --- | --- | --- | --- | --- | --- | --- | --- | --- | --- | --- | --- |
| 25 | 1.2.5 | **Proceso de pago y formas de entrega** |  | 0.75d | 2024-11-22 09:00 | 2024-11-22 17:00 |  |  |  | 2024-11-22 09:00 | 2024-11-22 17:00 | 0.75d | 0d |  | 9h |  | 279.54 | 279.54 |  |
| 26 | 1.2.5.1 | Diseño de las pantallas del proceso de pago (checkout) | manual | 3h | 2024-11-22 09:00 | 2024-11-22 12:00 | 58, 54, 61, 59, 53 |  |  | 2024-11-22 09:00 | 2024-11-22 12:00 | 3h |  | Desarrollador 2 | 3h |  | 93.18 | 93.18 |  |
| 27 | 1.2.5.2 | Implementación del formulario para los datos de cliente (registro o invitado). | manual | 3h | 2024-11-22 12:00 | 2024-11-22 17:00 | 26 |  |  | 2024-11-22 12:00 | 2024-11-22 17:00 | 3h |  | Desarrollador 3 | 3h |  | 93.18 | 93.18 |  |
| 28 | 1.2.5.3 | Implementación del formulario de selección de métodos de pago (contrareembolso, pasarela). | manual | 1h | 2024-11-22 12:00 | 2024-11-22 13:00 | 27SS |  |  | 2024-11-22 12:00 | 2024-11-22 13:00 | 1h |  | Desarrollador 1 | 1h |  | 31.06 | 31.06 |  |
| 29 | 1.2.5.4 | Implementación de las opciones de entrega y cálculo de envío. | manual | 2h | 2024-11-22 12:00 | 2024-11-22 16:00 | 26 |  |  | 2024-11-22 12:00 | 2024-11-22 16:00 | 2h |  | Desarrollador 5 [50%]; Desarrollador 4 [50%] | 2h |  | 62.12 | 62.12 |  |
| 30 | 1.2.6 | **Interfaz registro/login. Perfil de usuario** |  | 0.31d | 2024-11-14 11:00 A | 2024-11-14 15:30 A |  | 100% |  | 2024-11-14 11:00 | 2024-11-14 18:00 | 0.62d |  |  | 1.5h | 1.5h | 46.59 | 124.24 | 46.59 |
| 31 | 1.2.6.1 | Implementación de registro y login | manual | 1h | 2024-11-14 11:00 A | 2024-11-14 12:00 A | 46 | 100% |  | 2024-11-14 11:00 | 2024-11-14 12:00 | 1h |  | Desarrollador 1 | 1h | 1h | 31.06 | 31.06 | 31.06 |
| 32 | 1.2.6.2 | Implementación de perfil de usuario | manual | 0.5h | 2024-11-14 15:00 A | 2024-11-14 15:30 A | 47, 31, 48 | 100% |  | 2024-11-14 15:00 | 2024-11-14 18:00 | 3h |  | Desarrollador 3 [50%]; Desarrollador 4 [50%] | 0.5h | 0.5h | 15.53 | 93.18 | 15.53 |
| 33 | 1.1.2.7 | **Módulo gestión (Cliente y Administrador)** |  | 5.88d | 2024-11-15 12:00 A | 2024-11-25 11:00 |  | 8% | 5.42d | 2024-11-15 12:00 | 2024-11-25 11:00 | 5.88d | 0d |  | 2.17h | 0.17h | 67.3 | 124.24 | 5.18 |
| 34 | 1.2.7.1 | Implementación de gestión como usuario | manual | 2h | 2024-11-25 09:00 | 2024-11-25 11:00 | 63, 62 |  |  | 2024-11-25 09:00 | 2024-11-25 11:00 | 2h |  | Desarrollador 3 | 2h |  | 62.12 | 62.12 |  |
| 35 | 1.2.7.2 | Implementación de gestión como administrador | manual | 0.17h | 2024-11-15 12:00 A | 2024-11-15 12:10 A | 50 | 100% |  | 2024-11-15 12:00 | 2024-11-15 16:00 | 2h |  | Desarrollador 1 | 0.17h | 0.17h | 5.18 | 62.12 | 5.18 |
| 36 | 1.1.2.8 | **Pruebas de la interfaz** |  | 0.5d | 2024-11-21 09:00 | 2024-11-21 13:00 |  |  |  | 2024-11-21 09:00 | 2024-11-21 13:00 | 0.5d | 0d |  | 4h |  | 104.28 | 104.28 |  |
| 37 | 1.1.2.8.1 | Prueba de Interfaz | manual | 4h | 2024-11-21 09:00 | 2024-11-21 13:00 | 22 |  |  | 2024-11-21 09:00 | 2024-11-21 13:00 | 4h |  | Tester de Calidad 1 [20%]; Tester de Calidad 2 [20%]; Tester de Calidad 3 [20%]; Tester de Calidad 4 [20%]; Tester de Calidad 5 [20%] | 4h |  | 104.28 | 104.28 |  |
| 38 | 1.1.3 | **Backend** |  | 10.5d | 2024-11-12 09:00 A | 2024-11-26 13:00 |  | 25% | 7.84d | 2024-11-12 09:00 | 2024-11-26 13:00 | 10.5d | 0d |  | 34.83h | 8.83h | 1,063.3 | 1,944.84 | 305.64 |
| 39 | 1.3.1 | **Relación entre tablas** |  | 3.75d | 2024-11-12 09:00 A | 2024-11-15 17:00 A |  | 100% |  | 2024-11-12 09:00 | 2024-11-15 18:00 | 3.88d |  |  | 5.25h | 5.25h | 191.32 | 672.12 | 191.32 |
| 40 | 1.3.1.1 | Diseño de la estructura de la base de datos | manual | 3h | 2024-11-12 09:00 A | 2024-11-12 12:00 A | 5 | 100% |  | 2024-11-12 09:00 | 2024-11-13 13:00 | 12h |  | Arquitecto de sistemas 1 [20%]; Arquitecto de sistemas 2 [20%]; Arquitecto de sistemas 3 [20%]; Arquitecto de sistemas 4 [20%]; Arquitecto de sistemas 5 [20%] | 3h | 3h | 121.44 | 485.76 | 121.44 |
| 41 | 1.3.1.2 | Creación de la tabla de las entidades | manual | 1.25h | 2024-11-13 15:00 A | 2024-11-13 16:15 A | 40, 9 | 100% |  | 2024-11-13 15:00 | 2024-11-13 19:00 | 4h |  | Desarrollador 1 [20%]; Desarrollador 2 [20%]; Desarrollador 3 [20%]; Desarrollador 4 [20%]; Desarrollador 5 [20%] | 1.25h | 1.25h | 38.83 | 124.24 | 38.83 |
| 42 | 1.3.1.3 | Añadir los cursos a la base de datos | manual | 1h | 2024-11-15 16:00 A | 2024-11-15 17:00 A | 51, 35 | 100% |  | 2024-11-15 16:00 | 2024-11-15 18:00 | 2h |  | Desarrollador 5 | 1h | 1h | 31.06 | 62.12 | 31.06 |
| 43 | 1.3.2 | **Definición de consultas y procedimientos almacenados** |  | 0.04d | 2024-11-15 18:00 A | 2024-11-15 18:20 A |  | 100% |  | 2024-11-15 18:00 | 2024-11-18 10:00 | 0.25d |  |  | 0.33h | 0.33h | 13.37 | 80.22 | 13.37 |
| 44 | 1.3.2.1 | Definición de consultas para recuperar información de cursos. | manual | 0.33h | 2024-11-15 18:00 A | 2024-11-15 18:20 A | 42 | 100% |  | 2024-11-15 18:00 | 2024-11-18 10:00 | 2h |  | Administrador de datos 1 [20%]; Administrador de datos 2 [20%]; Administrador de datos 3 [20%]; Administrador de datos 4 [20%]; Administrador de datos 5 [20%] | 0.33h | 0.33h | 13.37 | 80.22 | 13.37 |
| 45 | 1.3.3 | **Sistema de registro/login** |  | 0.38d | 2024-11-14 09:00 A | 2024-11-14 12:00 A |  | 100% |  | 2024-11-14 09:00 | 2024-11-14 13:00 | 0.5d |  |  | 2h | 2h | 62.12 | 186.36 | 62.12 |
| 46 | 1.3.3.1 | Implementación del formulario de registro para nuevos usuarios | manual | 0.5h | 2024-11-14 09:00 A | 2024-11-14 09:30 A | 41 | 100% |  | 2024-11-14 09:00 | 2024-11-14 11:00 | 2h |  | Desarrollador 1 [50%]; Desarrollador 2 [50%] | 0.5h | 0.5h | 15.53 | 62.12 | 15.53 |
| 47 | 1.3.3.2 | Implementación del sistema de autenticación por correo y contraseña. | manual | 1h | 2024-11-14 11:00 A | 2024-11-14 12:00 A | 46 | 100% |  | 2024-11-14 11:00 | 2024-11-14 13:00 | 2h |  | Desarrollador 3 [50%]; Desarrollador 4 [50%] | 1h | 1h | 31.06 | 62.12 | 31.06 |
| 48 | 1.3.3.3 | Desarrollo de funcionalidades de recuperación de contraseña. | manual | 0.5h | 2024-11-14 11:00 A | 2024-11-14 11:30 A | 31SS | 100% |  | 2024-11-14 11:00 | 2024-11-14 13:00 | 2h |  | Desarrollador 5 | 0.5h | 0.5h | 15.53 | 62.12 | 15.53 |

| ID | WBS | Task | Type | Duration | Start | Finish | Predecessors | Complete | Baseline start | Baseline finish | Baseline duration | Total slack | Resources | Work | Actual work | Cost | Baseline cost | Actual cost |
| --- | --- | --- | --- | --- | --- | --- | --- | --- | --- | --- | --- | --- | --- | --- | --- | --- | --- | --- |
| 49 | 1.3.4 | **Módulo de gestión (Cliente/administrador)** |  | 0.52d | 2024-11-14 18:00 A | 2024-11-15 12:10 A |  | 100% | 2024-11-14 18:00 | 2024-11-15 16:00 | 0.75d |  |  | 0.5h | 0.5h | 15.53 | 186.36 | 15.53 |
| 50 | 1.3.4.1 | Desarrollo de funcionalidades para ver, editar o eliminar usuarios. | manual | 0.33h | 2024-11-14 18:00 A | 2024-11-14 18:20 A | 32 | 100% | 2024-11-14 18:00 | 2024-11-15 12:00 | 4h |  | Desarrollador 4 [50%]; Desarrollador 5 [50%] | 0.33h | 0.33h | 10.35 | 124.24 | 10.35 |
| 51 | 1.3.4.2 | Implementación de la edición de datos del cliente por el propio usuario. | manual | 0.17h | 2024-11-15 12:00 A | 2024-11-15 12:10 A | 35SS | 100% | 2024-11-15 12:00 | 2024-11-15 16:00 | 2h |  | Desarrollador 3 | 0.17h | 0.17h | 5.18 | 62.12 | 5.18 |
| 52 | 1.3.5 | **Gestión de pedidos** |  | 0.88d | 2024-11-21 09:00 | 2024-11-21 18:00 |  |  | 2024-11-21 09:00 | 2024-11-21 18:00 | 0.88d | 0d |  | 4h |  | 124.24 | 124.24 |  |
| 53 | 1.3.5.1 | Desarrollo del sistema para registrar nuevos pedidos | manual | 3h | 2024-11-21 15:00 | 2024-11-21 18:00 | 37 |  | 2024-11-21 15:00 | 2024-11-21 18:00 | 3h |  | Desarrollador 1 [50%]; Desarrollador 2 [50%] | 3h |  | 93.18 | 93.18 |  |
| 54 | 1.1.3.5.2 | Implementación del sistema para modificar el estado de los pedidos. | manual | 1h | 2024-11-21 09:00 | 2024-11-21 10:00 | 21 |  | 2024-11-21 09:00 | 2024-11-21 10:00 | 1h |  | Desarrollador 4 [33%]; Desarrollador 5 [33%]; Desarrollador 1 [34%] | 1h |  | 31.06 | 31.06 |  |
| 55 | 1.3.6 | **Motor de búsqueda por tres criterios** |  | 0.09d | 2024-11-19 11:00 A | 2024-11-19 11:45 A |  | 100% | 2024-11-19 11:00 | 2024-11-19 13:00 | 0.25d |  |  | 0.75h | 0.75h | 23.3 | 62.12 | 23.3 |
| 56 | 1.3.6.1 | Implementación de la funcionalidad de búsqueda filtrada | manual | 0.75h | 2024-11-19 11:00 A | 2024-11-19 11:45 A | 12 | 100% | 2024-11-19 11:00 | 2024-11-19 13:00 | 2h |  | Desarrollador 2 [34%]; Desarrollador 3 [33%]; Desarrollador 4 [33%] | 0.75h | 0.75h | 23.3 | 62.12 | 23.3 |
| 57 | 1.3.7 | **Pasarela de pago y contrarembolso** |  | 0.5d | 2024-11-21 15:00 | 2024-11-21 19:00 |  |  | 2024-11-21 15:00 | 2024-11-21 19:00 | 0.5d | 0d |  | 7h |  | 217.42 | 217.42 |  |
| 58 | 1.3.7.1 | Integración de la API de la pasarela de pago seleccionada. | manual | 4h | 2024-11-21 15:00 | 2024-11-21 19:00 | 37 |  | 2024-11-21 15:00 | 2024-11-21 19:00 | 4h |  | Desarrollador 2 | 4h |  | 124.24 | 124.24 |  |
| 59 | 1.3.7.2 | Implementación del sistema de pago por contrarrembolso. | manual | 3h | 2024-11-21 15:00 | 2024-11-21 18:00 | 53SS |  | 2024-11-21 15:00 | 2024-11-21 18:00 | 3h |  | Desarrollador 5 | 3h |  | 93.18 | 93.18 |  |
| 60 | 1.3.8 | **Seguimiento de pedidos** |  | 1.5d | 2024-11-21 15:00 | 2024-11-22 19:00 |  |  | 2024-11-21 15:00 | 2024-11-22 19:00 | 1.5d | 0d |  | 5h |  | 155.3 | 155.3 |  |
| 61 | 1.3.8.1 | Desarrollo de la funcionalidad para generar un ID único de pedido. | manual | 2h | 2024-11-21 15:00 | 2024-11-21 17:00 | 53SS |  | 2024-11-21 15:00 | 2024-11-21 17:00 | 2h |  | Desarrollador 3 | 2h |  | 62.12 | 62.12 |  |
| 62 | 1.3.8.2 | Implementación del seguimiento de pedidos para clientes (a través de ID de pedido). | manual | 2h | 2024-11-22 17:00 | 2024-11-22 19:00 | 29, 28, 27 |  | 2024-11-22 17:00 | 2024-11-22 19:00 | 2h |  | Desarrollador 2 | 2h |  | 62.12 | 62.12 |  |
| 63 | 1.3.8.3 | Implementación del seguimiento de pedidos para administradores (ver todos los pedidos) | manual | 1h | 2024-11-22 17:00 | 2024-11-22 18:00 | 62SS |  | 2024-11-22 17:00 | 2024-11-22 18:00 | 1h |  | Desarrollador 1 | 1h |  | 31.06 | 31.06 |  |
| 64 | 1.1.3.9 | **Pruebas Unitarias** |  | 1.25d | 2024-11-25 11:00 | 2024-11-26 13:00 |  |  | 2024-11-25 11:00 | 2024-11-26 13:00 | 1.25d | 0d |  | 10h |  | 260.7 | 260.7 |  |
| 65 | 1.1.3.9.1 | Pruebas Unitarias | manual | 10h | 2024-11-25 11:00 | 2024-11-26 13:00 | 34 |  | 2024-11-25 11:00 | 2024-11-26 13:00 | 10h |  | Tester de Calidad 1 [20%]; Tester de Calidad 2 [20%]; Tester de Calidad 3 [20%]; Tester de Calidad 4 [20%]; Tester de Calidad 5 [20%] | 10h |  | 260.7 | 260.7 |  |
| 66 | 1.1.4 | **Despliegue** |  | 1.5d | 2024-11-26 15:00 | 2024-11-27 19:00 |  |  | 2024-11-26 15:00 | 2024-11-27 19:00 | 1.5d | 0d |  | 12h |  | 372.72 | 372.72 |  |
| 67 | 1.1.4.1 | Creación de la imagen del contenedor | manual | 6h | 2024-11-26 15:00 | 2024-11-27 11:00 | 65 |  | 2024-11-26 15:00 | 2024-11-27 11:00 | 6h |  | Desarrollador 1 [50%]; Desarrollador 5 [50%] | 6h |  | 186.36 | 186.36 |  |
| 68 | 1.1.4.2 | Configuración y despliegue en PaaS | manual | 6h | 2024-11-27 11:00 | 2024-11-27 19:00 | 67 |  | 2024-11-27 11:00 | 2024-11-27 19:00 | 6h |  | Desarrollador 2 [33%]; Desarrollador 3 [33%]; Desarrollador 4 [34%] | 6h |  | 186.36 | 186.36 |  |
| 69 | 1.1.4.3 | Implementacion | milestone, manual | 0h | 2024-11-27 09:00 | 2024-11-27 09:00 |  |  | 2024-11-27 09:00 | 2024-11-27 09:00 | 0h |  |  |  |  |  |  |  |
| 70 | 1.2 | **Seguimiento** |  | 0.12d | 2024-11-15 12:00 A | 2024-11-15 13:00 A |  | 100% | 2024-11-15 12:00 | 2024-11-15 17:00 | 0.38d |  |  | 2h | 2h | 106.78 | 320.34 | 106.78 |
| 71 | 1.2.1 | **Informe de desempeño del equipo de trabajo** |  | 0.12d | 2024-11-15 12:00 A | 2024-11-15 13:00 A |  | 100% | 2024-11-15 12:00 | 2024-11-15 17:00 | 0.38d |  |  | 1h | 1h | 53.39 | 160.17 | 53.39 |
| 72 | 1.2.1.1 | Informe de Desempeño del Equipo de Trabajo | manual | 1h | 2024-11-15 12:00 A | 2024-11-15 13:00 A | 50 | 100% | 2024-11-15 12:00 | 2024-11-15 17:00 | 3h |  | Gestor de proyectos 1 [20%]; Gestor de proyectos 2 [20%]; Gestor de proyectos 3 [20%]; Gestor de proyectos 4 [20%]; Gestor de proyectos 5 [20%] | 1h | 1h | 53.39 | 160.17 | 53.39 |

| ID | WBS | Task | Type | Duration | Start | Finish | Predecessors | Complete | Baseline start | Baseline finish | Baseline duration | Total slack | Resources | Work | Actual work | Cost | Baseline cost | Actual cost |
| --- | --- | --- | --- | --- | --- | --- | --- | --- | --- | --- | --- | --- | --- | --- | --- | --- | --- | --- |
| 73 | 1.2.2 | **Informe de seguimiento del proyecto con MS proyect** |  | 0.12d | 2024-11-15 12:00 A | 2024-11-15 13:00 A |  | 100% | 2024-11-15 12:00 | 2024-11-15 17:00 | 0.38d |  |  | 1h | 1h | 53.39 | 160.17 | 53.39 |
| 74 | 1.2.2.1 | Informe de Seguimiento del Proyecto generado con MS Project | manual | 1h | 2024-11-15 12:00 A | 2024-11-15 13:00 A | 50 | 100% | 2024-11-15 12:00 | 2024-11-15 17:00 | 3h |  | Gestor de proyectos 1 [20%]; Gestor de proyectos 2 [20%]; Gestor de proyectos 3 [20%]; Gestor de proyectos 4 [20%]; Gestor de proyectos 5 [20%] | 1h | 1h | 53.39 | 160.17 | 53.39 |
| 75 | 1.3 | **Cierre** |  | 2d | 2024-11-27 09:00 | 2024-11-28 19:00 |  |  | 2024-11-27 09:00 | 2024-11-28 19:00 | 2d | 0d |  | 8h |  | 382.46 | 382.46 |  |
| 76 | 1.3.1 | **Instrucciones de despliegue** |  | 0.25d | 2024-11-28 09:00 | 2024-11-28 11:00 |  |  | 2024-11-28 09:00 | 2024-11-28 11:00 | 0.25d | 0d |  | 2h |  | 62.12 | 62.12 |  |
| 77 | 1.3.1.1 | Instrucciones para el despliegue del contenedor | manual | 2h | 2024-11-28 09:00 | 2024-11-28 11:00 | 68 |  | 2024-11-28 09:00 | 2024-11-28 11:00 | 2h |  | Desarrollador 1 [20%]; Desarrollador 2 [20%]; Desarrollador 3 [20%]; Desarrollador 4 [20%]; Desarrollador 5 [20%] | 2h |  | 62.12 | 62.12 |  |
| 78 | 1.3.2 | **Informe de cierre** |  | 2d | 2024-11-27 09:00 | 2024-11-28 19:00 |  |  | 2024-11-27 09:00 | 2024-11-28 19:00 | 2d | 0d |  | 6h |  | 320.34 | 320.34 |  |
| 79 | 1.3.2.1 | Informe de Cierre | manual | 6h | 2024-11-28 11:00 | 2024-11-28 19:00 | 77 |  | 2024-11-28 11:00 | 2024-11-28 19:00 | 6h |  | Gestor de proyectos 1 [20%]; Gestor de proyectos 2 [20%]; Gestor de proyectos 3 [20%]; Gestor de proyectos 4 [20%]; Gestor de proyectos 5 [20%] | 6h |  | 320.34 | 320.34 |  |
| 80 | 1.3.2.2 | Cierre | milestone, manual | 0h | 2024-11-27 09:00 | 2024-11-27 09:00 |  |  | 2024-11-27 09:00 | 2024-11-27 09:00 | 0h |  |  |  |  |  |  |  |
